# Cronograma

How a schedule from MS Project changed from version to version. A marks actual dates.

## Version 1 (saved 2020-06-06)

Note of the change: add(Cronograma): Primera version del cronograma

| ID | WBS | Task | Duration | Start | Finish | Predecessors | Total float | Constraint |
| --- | --- | --- | --- | --- | --- | --- | --- | --- |
| 1 | 1 | **Proyecto** | 26d | 2020-01-20 | 2020-02-24 |  | 0d |  |
| 2 | 1.1 | **Capacitación en Angular** | 10d | 2020-01-20 | 2020-01-31 |  | 0d |  |
| 3 |  | Sintaxis de typescript | 1d | 2020-01-20 | 2020-01-20 |  | 0d |  |
| 4 |  | Tipos de dato, funciones | 1d | 2020-01-21 | 2020-01-21 | 3 | 0d |  |
| 5 |  | Uso de herencia e implementación | 1d | 2020-01-22 | 2020-01-22 | 4 | 0d |  |
| 6 |  | USo de CLI Angular (Comandos para creación dinámica) | 1d | 2020-01-23 | 2020-01-23 | 5 | 0d | start no earlier than 2020-01-23 |
| 7 |  | Creación y uso de componentes | 1d | 2020-01-24 | 2020-01-24 | 6 | 0d | start no earlier than 2020-01-24 |
| 8 |  | Ciclo de vida de los componentes | 1d | 2020-01-27 | 2020-01-27 | 7 | 0d |  |
| 9 |  | Comunicación entre componentes | 1d | 2020-01-28 | 2020-01-28 | 8 | 0d |  |
| 10 |  | Servicios Http y Ajax en Angular | 1d | 2020-01-29 | 2020-01-29 | 9 | 0d |  |
| 11 |  | Pipes y formularios | 1d | 2020-01-30 | 2020-01-30 | 10 | 0d |  |
| 12 |  | Angular Material UI | 1d | 2020-01-31 | 2020-01-31 | 11 | 0d |  |
| 13 |  | Aplicación de prueba Angular 8.0 | 1d | 2020-01-31 | 2020-01-31 | 11 | 0d |  |
| 14 | 1.2 | **Capacitación en Latex** | 10d | 2020-01-20 | 2020-01-31 |  | 16d |  |
| 15 |  | Sintaxis | 1d | 2020-01-20 | 2020-01-20 |  | 2d |  |
| 16 |  | Estructura | 1d | 2020-01-21 | 2020-01-21 | 15 | 2d |  |
| 17 |  | Prueba de librerías | 1d | 2020-01-22 | 2020-01-22 | 16 | 2d |  |
| 18 |  | Uso de Overleaf | 1d | 2020-01-23 | 2020-01-23 | 17 | 2d |  |
| 19 |  | Plantilla latex (Reporte Técnico) | 4d | 2020-01-24 | 2020-01-29 | 18 | 2d |  |
| 20 |  | Requerimientos No Funcionales | 1d | 2020-01-30 | 2020-01-30 | 19 | 2d |  |
| 21 |  | Análisis de Riesgos**************** | 1d | 2020-01-31 | 2020-01-31 | 20 | 2d |  |
| 22 | 1.3 | **Arquitectura y Metodología** | 2d | 2020-02-03 | 2020-02-04 | 2 | 0d |  |
| 23 |  | Descripción de arquitecturra y metodologia | 2d | 2020-02-03 | 2020-02-04 |  | 0d |  |
| 24 |  | Creacion de Diagrama de narquitectura | 2d | 2020-02-03 | 2020-02-04 |  | 0d |  |
| 25 | 1.4 | **Modelo de Negocio** | 3d | 2020-02-05 | 2020-02-07 | 22 | 0d |  |
| 26 |  | Identificación de Objetos de Negocio | 1d | 2020-02-05 | 2020-02-05 |  | 2d |  |
| 27 |  | Creación de primera versión de Modelo de Negocio | 3d | 2020-02-05 | 2020-02-07 |  | 0d |  |
| 28 | 1.5 | **Capacitación en Firebase** | 9d | 2020-02-10 | 2020-02-20 | 25 | 0d |  |
| 29 |  | Base de Datos no SQL | 1d | 2020-02-10 | 2020-02-10 |  | 0d |  |
| 30 |  | Colecciones y Documentos | 1d | 2020-02-10 | 2020-02-10 |  | 0d |  |
| 31 |  | Estructura JSON | 2d | 2020-02-11 | 2020-02-12 | 29, 30 | 0d |  |
| 32 |  | Cloud Firestore | 3d | 2020-02-13 | 2020-02-17 | 31 | 0d |  |
| 33 |  | Realtime Database | 1d | 2020-02-18 | 2020-02-18 | 32 | 0d |  |
| 34 |  | Reglas de seguridad | 2d | 2020-02-19 | 2020-02-20 | 33 | 0d |  |
| 35 |  | Tipos de autentificación | 2d | 2020-02-19 | 2020-02-20 | 33 | 0d |  |
| 36 | 1.6 | **Integración Firebase y Angular** | 1d | 2020-02-21 | 2020-02-21 | 28 | 0d |  |
| 37 |  | Prueba con CRUD Angular + Firebase | 1d | 2020-02-21 | 2020-02-21 |  | 0d |  |
| 38 |  | Prueba de Alta documento con diferentes tipos de datos | 1d | 2020-02-21 | 2020-02-21 |  | 0d |  |
| 39 |  | Lectura de datos individual | 1d | 2020-02-21 | 2020-02-21 |  | 0d |  |
| 40 |  | Lectura de datos por Colecciones | 1d | 2020-02-21 | 2020-02-21 |  | 0d |  |
| 41 |  | Lectura con filtros | 1d | 2020-02-21 | 2020-02-21 |  | 0d |  |
| 42 |  | Funciones Cloud | 1d | 2020-02-21 | 2020-02-21 |  | 0d |  |
| 43 |  | Altas con por lotes | 1d | 2020-02-21 | 2020-02-21 |  | 0d |  |
| 44 |  | Edición de documentos | 1d | 2020-02-21 | 2020-02-21 |  | 0d |  |
| 45 | 1.7 | **<Tarea nueva>** | 1d | 2020-02-24 | 2020-02-24 | 25, 28, 36 | 0d |  |
| 46 |  | Hosting Firebase | 1d | 2020-02-24 | 2020-02-24 |  | 0d |  |
| 47 |  | Pruebas de sitio | 1d | 2020-02-24 | 2020-02-24 |  | 0d |  |

## Version 2 (saved 2020-06-06)

Note of the change: update(Cronograma)

Last finish 2020-02-24 → 2020-03-03 (+8d). Complete tasks 0 → 7.

Added:

| ID | Task | Duration | Start | Finish | Predecessors |
| --- | --- | --- | --- | --- | --- |
| 47 | **Sprint Gestión de etapas** | 7d | 2020-02-03 | 2020-02-11 | 2, 14 |
| 48 | Diagrama en BPN | 1d | 2020-02-03 | 2020-02-03 |  |
| 49 | Descripcion de tareas. | 1d | 2020-02-03 | 2020-02-03 |  |
| 50 | Requerimientos Funcionales | 1d | 2020-02-04 | 2020-02-04 | 48, 49 |
| 51 | Mensajes | 1d | 2020-02-04 | 2020-02-04 | 48, 49 |
| 52 | Reglas de Negocio | 1d | 2020-02-05 | 2020-02-05 | 50, 51 |
| 53 | **Casos de Uso** | 3d | 2020-02-06 | 2020-02-10 | 52 |
| 54 | Definir Etapas para el sistema de gestión de admisión escolar | 1d | 2020-02-06 | 2020-02-06 |  |
| 55 | Definir fechas de etapas seleccionadas | 1d | 2020-02-07 | 2020-02-07 | 54 |
| 56 | Indice de Gestion de Etapas | 1d | 2020-02-10 | 2020-02-10 | 55 |
| 57 | Pantallas Modulo de Gestión de Etapas | 1d | 2020-02-11 | 2020-02-11 | 53 |
| 58 | Revisión de CU con Desarrollo. | 1d | 2020-02-03 | 2020-02-03 |  |
| 59 | Reportar y Solucionar Incidencias del Modulo de Gestión de Etapas | 1d | 2020-02-03 | 2020-02-03 |  |
| 60 | Revisión Final Módulo de Documentación | 1d | 2020-02-03 | 2020-02-03 |  |

Removed: 37 Prueba con CRUD Angular + Firebase

Changed:

| ID | Task | Start | Finish | Duration | Complete | Total float | Predecessors | Other |
| --- | --- | --- | --- | --- | --- | --- | --- | --- |
| 1 | **Proyecto** | 2020-01-20 A | 2020-02-24 → 2020-03-03 (+8d) | 26d → 32d | 0% → 15% |  |  |  |
| 14 | **Capacitación en Latex** | 2020-01-20 A | 2020-01-31 A |  | 0% → 100% | 16d → none |  |  |
| 15 | Sintaxis | 2020-01-20 A | 2020-01-20 A |  | 0% → 100% | 2d → none |  |  |
| 16 | Estructura | 2020-01-21 A | 2020-01-21 A |  | 0% → 100% | 2d → none |  |  |
| 17 | Prueba de librerías | 2020-01-22 A | 2020-01-22 A |  | 0% → 100% | 2d → none |  |  |
| 18 | Uso de Overleaf | 2020-01-23 A | 2020-01-23 A |  | 0% → 100% | 2d → none |  |  |
| 19 | Plantilla latex (Reporte Técnico) | 2020-01-24 A | 2020-01-29 A |  | 0% → 100% | 2d → none |  |  |
| 20 | Requerimientos No Funcionales | 2020-01-30 A | 2020-01-30 A |  | 0% → 100% | 2d → none |  |  |
| 21 | Análisis de Riesgos**************** | 2020-01-31 A | 2020-01-31 A |  | 0% → 100% | 2d → none |  |  |
| 23 | Descripción de arquitecturra y metodologia |  |  |  |  | 0d → 20d |  | resources none → López Sánchez Gustavo Andrés; Flores Altamirano Edgar |
| 24 | Creacion de Diagrama de narquitectura |  |  |  |  | 0d → 20d |  | resources none → Flores Altamirano Edgar; López Sánchez Gustavo Andrés |
| 25 | **Modelo de Negocio** | 2020-02-05 → 2020-02-03 (-2d) | 2020-02-07 → 2020-02-05 (-2d) |  |  |  | 22 → 2, 14 |  |
| 26 | Identificación de Objetos de Negocio | 2020-02-05 → 2020-02-03 (-2d) | 2020-02-05 → 2020-02-03 (-2d) |  |  |  |  | resources none → Flores Altamirano Edgar; López Sánchez Gustavo Andrés |
| 27 | Creación de primera versión de Modelo de Negocio | 2020-02-05 → 2020-02-03 (-2d) | 2020-02-07 → 2020-02-05 (-2d) |  |  |  |  | resources none → Flores Altamirano Edgar; López Sánchez Gustavo Andrés |
| 28 | **Capacitación en Firebase** | 2020-02-10 → 2020-02-06 (-4d) | 2020-02-20 → 2020-02-18 (-2d) |  |  |  |  |  |
| 29 | Base de Datos no SQL | 2020-02-10 → 2020-02-06 (-4d) | 2020-02-10 → 2020-02-06 (-4d) |  |  |  |  | resources none → López Sánchez Gustavo Andrés; Flores Altamirano Edgar |
| 30 | Colecciones y Documentos | 2020-02-10 → 2020-02-06 (-4d) | 2020-02-10 → 2020-02-06 (-4d) |  |  |  |  | resources none → López Sánchez Gustavo Andrés; Flores Altamirano Edgar |
| 31 | Estructura JSON | 2020-02-11 → 2020-02-07 (-4d) | 2020-02-12 → 2020-02-10 (-2d) |  |  |  |  | resources none → López Sánchez Gustavo Andrés; Flores Altamirano Edgar |
| 32 | Cloud Firestore | 2020-02-13 → 2020-02-11 (-2d) | 2020-02-17 → 2020-02-13 (-4d) |  |  |  |  | resources none → López Sánchez Gustavo Andrés; Flores Altamirano Edgar |
| 33 | Realtime Database | 2020-02-18 → 2020-02-14 (-4d) | 2020-02-18 → 2020-02-14 (-4d) |  |  |  |  | resources none → López Sánchez Gustavo Andrés; Flores Altamirano Edgar |
| 34 | Reglas de seguridad | 2020-02-19 → 2020-02-17 (-2d) | 2020-02-20 → 2020-02-18 (-2d) |  |  |  |  | resources none → López Sánchez Gustavo Andrés; Flores Altamirano Edgar |
| 35 | Tipos de autentificación | 2020-02-19 → 2020-02-17 (-2d) | 2020-02-20 → 2020-02-18 (-2d) |  |  |  |  | resources none → López Sánchez Gustavo Andrés; Flores Altamirano Edgar |
| 36 | **Integración Firebase y Angular** | 2020-02-21 → 2020-02-19 (-2d) | 2020-02-21 → 2020-03-02 (+10d) | 1d → 9d |  |  |  |  |
| 37 | Prueba de Alta documento con diferentes tipos de datos | 2020-02-21 → 2020-02-19 (-2d) | 2020-02-21 → 2020-02-19 (-2d) |  |  |  |  | resources none → López Sánchez Gustavo Andrés; Flores Altamirano Edgar |
| 38 | Lectura de datos individual | 2020-02-21 → 2020-02-20 (-1d) | 2020-02-21 → 2020-02-20 (-1d) |  |  |  | none → 37 | resources none → López Sánchez Gustavo Andrés; Flores Altamirano Edgar |
| 39 | Lectura de datos por Colecciones | 2020-02-21 → 2020-02-20 (-1d) | 2020-02-21 → 2020-02-20 (-1d) |  |  |  | none → 37 | resources none → López Sánchez Gustavo Andrés; Flores Altamirano Edgar |
| 40 | Lectura con filtros |  |  |  |  |  | none → 38, 39 | resources none → López Sánchez Gustavo Andrés; Flores Altamirano Edgar |
| 41 | Funciones Cloud | 2020-02-21 → 2020-02-24 (+3d) | 2020-02-21 → 2020-02-27 (+6d) | 1d → 4d |  |  | none → 40 | constraint none → start no earlier than 2020-01-22; resources none → López Sánchez Gustavo Andrés; Flores Altamirano Edgar |
| 42 | Altas con por lotes | 2020-02-21 → 2020-02-28 (+7d) | 2020-02-21 → 2020-02-28 (+7d) |  |  |  | none → 41 | resources none → López Sánchez Gustavo Andrés; Flores Altamirano Edgar |
| 43 | Edición de documentos | 2020-02-21 → 2020-03-02 (+10d) | 2020-02-21 → 2020-03-02 (+10d) |  |  |  | none → 41, 42 | resources none → López Sánchez Gustavo Andrés; Flores Altamirano Edgar |
| 44 | **Hosting** | 2020-02-24 → 2020-03-03 (+8d) | 2020-02-24 → 2020-03-03 (+8d) |  |  |  |  | was named <Tarea nueva> |
| 45 | Hosting Firebase | 2020-02-24 → 2020-03-03 (+8d) | 2020-02-24 → 2020-03-03 (+8d) |  |  |  |  | resources none → López Sánchez Gustavo Andrés; Flores Altamirano Edgar |
| 46 | Pruebas de sitio | 2020-02-24 → 2020-03-03 (+8d) | 2020-02-24 → 2020-03-03 (+8d) |  |  |  |  | resources none → López Sánchez Gustavo Andrés; Flores Altamirano Edgar |

## Version 3 (saved 2020-06-07)

Note of the change: update(Cronograma): Ultima version todos bien

Last finish 2020-03-03 → 2020-04-20 (+48d). Complete tasks 7 → 5.

Added:

| ID | Task | Duration | Start | Finish | Predecessors | Constraint | Resources |
| --- | --- | --- | --- | --- | --- | --- | --- |
| 46 | **Capacitación Automotización** | 10d | 2020-01-28 | 2020-02-10 | 2 |  |  |
| 47 | Localizando elementos (id, name, xpath, link text, tag name, class name, css selector). | 1d | 2020-01-28 | 2020-01-28 | 2 |  | Cervantes Moreno Christian Andres |
| 48 | Asserts | 1d | 2020-01-28 | 2020-01-28 | 2 |  | Cervantes Moreno Christian Andres |
| 49 | Unit test | 1d | 2020-01-29 | 2020-01-29 | 48 |  | Cervantes Moreno Christian Andres |
| 50 | Page Objects | 1d | 2020-01-29 | 2020-01-29 | 48 |  | Cervantes Moreno Christian Andres |
| 51 | Implicit Wait | 1d | 2020-01-30 | 2020-01-30 | 50 |  | Cervantes Moreno Christian Andres |
| 52 | Explicit Wait | 1d | 2020-01-31 | 2020-01-31 | 51 |  | Cervantes Moreno Christian Andres |
| 53 | Click en un toggle o Switch | 1d | 2020-02-03 | 2020-02-03 | 52 |  | Cervantes Moreno Christian Andres |
| 54 | Select con For | 1d | 2020-02-04 | 2020-02-04 | 53 |  | Cervantes Moreno Christian Andres |
| 55 | Subir Archivos | 1d | 2020-02-05 | 2020-02-05 | 54 |  | Cervantes Moreno Christian Andres |
| 56 | Reportes en HTML | 1d | 2020-02-06 | 2020-02-06 | 55 |  | Cervantes Moreno Christian Andres |
| 57 | Omitiendo Casos | 1d | 2020-02-07 | 2020-02-07 | 56 |  | Cervantes Moreno Christian Andres |
| 58 | Configuraciones de Bowrser | 1d | 2020-02-10 | 2020-02-10 | 57 |  | Cervantes Moreno Christian Andres |
| 59 | **Ánalisis de Factibilidad** | 10d | 2020-02-03 | 2020-02-14 | 14 |  |  |
| 60 | Factibilidad Técnica | 2d | 2020-02-03 | 2020-02-04 |  |  | López Rivera Aiko |
| 61 | Factibilidad Operativa | 1d | 2020-02-05 | 2020-02-05 | 60 |  | López Rivera Aiko |
| 62 | Factibilidad Económica | 2d | 2020-02-06 | 2020-02-07 | 61 |  | López Rivera Aiko |
| 63 | Análisis de Costos COCOMO | 4d | 2020-02-10 | 2020-02-13 | 62 |  | López Rivera Aiko |
| 64 | Análisis de Riegos | 1d | 2020-02-14 | 2020-02-14 | 63 |  | López Rivera Aiko |
| 65 | Diagrama de Casos de Uso | 1d | 2020-02-17 | 2020-02-17 | 59 |  | López Rivera Aiko |
| 67 | Diagrama en BPMN | 1d | 2020-02-13 | 2020-02-13 |  |  | Cervantes Moreno Christian Andres |
| 73 | Caso de Uso | 1d | 2020-02-18 | 2020-02-18 | 71 |  | Cervantes Moreno Christian Andres |
| 74 | Diagrama de Secuencia | 1d | 2020-02-19 | 2020-02-19 | 73 |  | Flores Altamirano Edgar |
| 75 | Desarrollo | 2d | 2020-02-20 | 2020-02-21 | 74, 43 |  | López Sánchez Gustavo Andrés |
| 77 | Caso de Uso | 1d | 2020-02-19 | 2020-02-19 | 73 | start no earlier than 2020-02-19 | Cervantes Moreno Christian Andres |
| 78 | Diagrama de Secuencia | 1d | 2020-02-20 | 2020-02-20 | 77 |  | Flores Altamirano Edgar |
| 79 | Desarrollo | 2d | 2020-02-24 | 2020-02-25 | 75 |  | López Sánchez Gustavo Andrés |
| 81 | Caso de Uso | 1d | 2020-02-18 | 2020-02-18 | 71 |  | Cervantes Moreno Christian Andres |
| 82 | Diagrama de Secuencia | 1d | 2020-02-19 | 2020-02-19 | 81 |  | Flores Altamirano Edgar |
| 83 | Desarrollo | 2d | 2020-02-26 | 2020-02-27 | 79 |  | López Sánchez Gustavo Andrés |
| 86 | Corrección casos de uso | 1d | 2020-03-12 | 2020-03-12 | 85 |  | Cervantes Moreno Christian Andres |
| 88 | Solucionar Incidencias del desarrollo | 2d | 2020-03-16 | 2020-03-17 | 87 |  | López Sánchez Gustavo Andrés |
| 90 | **Sprint Gestión de landingpage** | 17d | 2020-03-27 | 2020-04-20 | 178 |  |  |
| 92 | Descripcion de tareas. | 1d | 2020-03-27 | 2020-03-27 |  |  | López Rivera Aiko |
| 93 | Requerimientos Funcionales | 1d | 2020-03-30 | 2020-03-30 | 91, 92 |  | López Rivera Aiko |
| 94 | Reglas de Negocio | 1d | 2020-03-30 | 2020-03-30 | 91, 92 |  | López Rivera Aiko |
| 95 | Mensajes | 1d | 2020-03-31 | 2020-03-31 | 93, 94 |  | López Rivera Aiko |
| 96 | **Registro de aspirante Google o Correo y Contraseña** | 5d | 2020-04-01 | 2020-04-07 | 95 |  |  |
| 97 | Caso de Uso | 1d | 2020-04-01 | 2020-04-01 |  |  | López Rivera Aiko |
| 98 | Diagrama de Secuencia | 1d | 2020-04-02 | 2020-04-02 | 97 |  | Flores Altamirano Edgar |
| 99 | Desarrollo | 2d | 2020-04-06 | 2020-04-07 | 98, 183 |  | López Sánchez Gustavo Andrés |
| 100 | **Inicio de Sesión Administrador(s) o Aspirantes** | 2d | 2020-04-08 | 2020-04-09 | 96 |  |  |
| 101 | Caso de Uso | 1d | 2020-04-08 | 2020-04-08 |  |  | López Rivera Aiko |
| 102 | Diagrama de Secuencia | 1d | 2020-04-08 | 2020-04-08 |  |  | Flores Altamirano Edgar |
| 103 | Desarrollo | 2d | 2020-04-08 | 2020-04-09 |  |  | López Sánchez Gustavo Andrés |
| 104 | **LandingPage (Calendario)** | 2d | 2020-04-10 | 2020-04-13 | 100 |  |  |
| 105 | Caso de Uso | 1d | 2020-04-10 | 2020-04-10 |  |  | López Rivera Aiko |
| 106 | Diagrama de Secuencia | 1d | 2020-04-10 | 2020-04-10 |  |  | Flores Altamirano Edgar |
| 107 | Desarrollo | 2d | 2020-04-10 | 2020-04-13 |  |  | López Sánchez Gustavo Andrés |
| 108 | Pantallas del Modulo | 1d | 2020-04-10 | 2020-04-10 | 95, 96, 100 |  | López Rivera Aiko |
| 109 | Revisión de CU con Desarrollo. | 1d | 2020-04-13 | 2020-04-13 | 108 |  | López Rivera Aiko |
| 110 | Corrección casos de uso | 1d | 2020-04-14 | 2020-04-14 | 109 |  | López Rivera Aiko |
| 111 | Reportar Incidencias del desarrollo | 1d | 2020-04-15 | 2020-04-15 | 110 |  | López Rivera Aiko |
| 112 | Solucionar Incidencias del desarrollo | 2d | 2020-04-16 | 2020-04-17 | 111 |  | López Sánchez Gustavo Andrés |
| 113 | Revisión Final Módulo | 1d | 2020-04-20 | 2020-04-20 | 112 |  |  |
| 114 | **Sprint de Gestión de Usuarios** | 18d | 2020-02-19 | 2020-03-13 | 81 |  |  |
| 115 | Diagrama en BPMN | 1d | 2020-02-19 | 2020-02-19 | 81 |  | Cervantes Moreno Christian Andres |
| 116 | Descripción de Tareas | 1d | 2020-02-19 | 2020-02-19 | 81 |  | Cervantes Moreno Christian Andres |
| 117 | Requerimiento Funcionales | 1d | 2020-02-20 | 2020-02-20 | 116 |  | Cervantes Moreno Christian Andres |
| 118 | Mensajes | 1d | 2020-02-21 | 2020-02-21 | 117 |  | Cervantes Moreno Christian Andres |
| 119 | **Indice de Gestión de Usuarios** | 2d | 2020-02-24 | 2020-02-25 | 118 |  |  |
| 120 | Caso de Uso | 1d | 2020-02-24 | 2020-02-24 | 118 |  | Cervantes Moreno Christian Andres |
| 121 | Diagrama de Secuencia | 1d | 2020-02-25 | 2020-02-25 | 120 | start no earlier than 2020-02-17 | Flores Altamirano Edgar |
| 122 | Desarrollo | 1d | 2020-02-25 | 2020-02-25 | 120 | start no earlier than 2020-02-17 | Flores Altamirano Edgar |
| 123 | **Visualizar Administrador** | 2d | 2020-02-24 | 2020-02-25 | 118 |  |  |
| 124 | Caso de Uso | 1d | 2020-02-24 | 2020-02-24 | 118 |  | Cervantes Moreno Christian Andres |
| 125 | Diagrama de Secuencia | 1d | 2020-02-25 | 2020-02-25 | 120 | start no earlier than 2020-02-20 | Flores Altamirano Edgar |
| 126 | Desarrollo | 1d | 2020-02-25 | 2020-02-25 | 120 | start no earlier than 2020-02-20 | Flores Altamirano Edgar |
| 127 | **Dar de Alta Administrador** | 4d | 2020-02-24 | 2020-02-27 | 118 |  |  |
| 128 | Caso de Uso | 1d | 2020-02-24 | 2020-02-24 | 118 |  | Cervantes Moreno Christian Andres |
| 129 | Diagrama de Secuencia | 1d | 2020-02-26 | 2020-02-26 | 128, 126 | start no earlier than 2020-02-24 | Flores Altamirano Edgar |
| 130 | Desarrollo | 2d | 2020-02-26 | 2020-02-27 | 128, 126 | start no earlier than 2020-02-24 | Flores Altamirano Edgar |
| 131 | **Editar Administrador** | 5d | 2020-02-25 | 2020-03-02 | 128 |  |  |
| 132 | Caso de Uso | 1d | 2020-02-25 | 2020-02-25 | 128 |  | Cervantes Moreno Christian Andres |
| 133 | Diagrama de Secuencia | 1d | 2020-02-28 | 2020-02-28 | 132, 130 | start no earlier than 2020-02-26 | Flores Altamirano Edgar |
| 134 | Desarrollo | 2d | 2020-02-28 | 2020-03-02 | 132, 130 | start no earlier than 2020-02-26 | Flores Altamirano Edgar |
| 135 | **Visualizar Aspirante** | 2d | 2020-03-02 | 2020-03-03 | 128 |  |  |
| 136 | Caso de Uso | 1d | 2020-03-02 | 2020-03-02 | 128 | start no earlier than 2020-03-02 | Cervantes Moreno Christian Andres |
| 137 | Diagrama de Secuencia | 1d | 2020-03-03 | 2020-03-03 | 136, 134 | start no earlier than 2020-02-28 | Flores Altamirano Edgar |
| 138 | Desarrollo | 1d | 2020-03-03 | 2020-03-03 | 136, 134 | start no earlier than 2020-02-28 | Flores Altamirano Edgar |
| 139 | **Editar Aspirante** | 3d | 2020-03-03 | 2020-03-05 | 136 |  |  |
| 140 | Caso de Uso | 1d | 2020-03-03 | 2020-03-03 | 136 |  | Cervantes Moreno Christian Andres |
| 141 | Diagrama de Secuencia | 1d | 2020-03-04 | 2020-03-04 | 140, 138 | start no earlier than 2020-03-02 | Flores Altamirano Edgar |
| 142 | Desarrollo | 2d | 2020-03-04 | 2020-03-05 | 140, 138 | start no earlier than 2020-03-02 | Flores Altamirano Edgar |
| 143 | **Aprobar Permisos Administrador** | 5d | 2020-03-03 | 2020-03-09 | 136 |  |  |
| 144 | Caso de Uso | 1d | 2020-03-03 | 2020-03-03 | 136 |  | Cervantes Moreno Christian Andres |
| 145 | Diagrama de Secuencia | 1d | 2020-03-06 | 2020-03-06 | 144, 142 | start no earlier than 2020-03-05 | Flores Altamirano Edgar |
| 146 | Desarrollo | 2d | 2020-03-06 | 2020-03-09 | 144, 142 | start no earlier than 2020-03-05 | Flores Altamirano Edgar |
| 147 | Pantallas del Módulo | 2d | 2020-03-10 | 2020-03-11 | 146 | start no earlier than 2020-02-18 | Cervantes Moreno Christian Andres |
| 148 | Revisión de CU con Desarrollo | 1d | 2020-03-10 | 2020-03-10 | 146 |  | Flores Altamirano Edgar; Cervantes Moreno Christian Andres |
| 149 | Corrección Casos de Uso | 1d | 2020-03-11 | 2020-03-11 | 148 | start no earlier than 2020-02-28 | Cervantes Moreno Christian Andres |
| 150 | Reportar Inicdencias del Desarrollo | 1d | 2020-03-12 | 2020-03-12 | 149 | finish no earlier than 2020-02-28 | Cervantes Moreno Christian Andres |
| 151 | Solucionar Incidencias del Desarrollo | 1d | 2020-03-12 | 2020-03-12 | 149 |  | Flores Altamirano Edgar |
| 152 | Revisión Final Módulo | 1d | 2020-03-13 | 2020-03-13 | 150 |  | Cervantes Moreno Christian Andres |
| 153 | **Sprint de Gestión de Documentación** | 34d | 2020-02-18 | 2020-04-03 | 65 |  |  |
| 154 | Diagrama BPMN | 2d | 2020-02-18 | 2020-02-19 |  |  | López Rivera Aiko |
| 155 | Descripción de Tareas | 1d | 2020-02-20 | 2020-02-20 | 154 |  | López Rivera Aiko |
| 156 | Requerimientos Funcionales | 2d | 2020-02-21 | 2020-02-24 | 155 |  | López Rivera Aiko |
| 157 | Reglas de Negocio | 1d | 2020-02-25 | 2020-02-25 | 156 |  | López Rivera Aiko |
| 158 | Mensajes | 1d | 2020-02-26 | 2020-02-26 | 157 |  | López Rivera Aiko |
| 159 | **Indice de Gestión de Documentación** | 2d | 2020-02-27 | 2020-02-28 | 158 |  |  |
| 160 | Caso de Uso | 1d | 2020-02-27 | 2020-02-27 | 158 |  | López Rivera Aiko |
| 161 | Desarrollo | 1d | 2020-02-28 | 2020-02-28 | 160, 83 |  | López Sánchez Gustavo Andrés |
| 162 | **Registrar requisitos para Documentación** | 6d | 2020-02-28 | 2020-03-06 |  |  |  |
| 163 | Caso de Uso | 2d | 2020-02-28 | 2020-03-02 | 160 |  | López Rivera Aiko |
| 164 | Desarrollo | 5d | 2020-03-02 | 2020-03-06 | 161 |  | López Sánchez Gustavo Andrés |
| 165 | **Ordenar Requisitos para Documentación** | 6d | 2020-03-03 | 2020-03-10 |  |  |  |
| 166 | Caso de Uso | 1d | 2020-03-03 | 2020-03-03 | 163 |  | López Rivera Aiko |
| 167 | Desarrollo | 2d | 2020-03-09 | 2020-03-10 | 164 |  | López Sánchez Gustavo Andrés |
| 168 | **Editar requisitos para Documentación** | 7d | 2020-03-04 | 2020-03-12 |  |  |  |
| 169 | Caso de Uso | 1d | 2020-03-04 | 2020-03-04 | 166 |  | López Rivera Aiko |
| 170 | Desarrollo | 2d | 2020-03-11 | 2020-03-12 | 167 |  | López Sánchez Gustavo Andrés |
| 171 | **Validar Requisitos para Documentación** | 9d | 2020-03-05 | 2020-03-17 |  |  |  |
| 172 | Caso de Uso | 2d | 2020-03-05 | 2020-03-06 | 169 |  | López Rivera Aiko |
| 173 | Desarrollo | 3d | 2020-03-13 | 2020-03-17 | 170 |  | López Sánchez Gustavo Andrés |
| 174 | **Subir requisitos para Documentación** | 11d | 2020-03-09 | 2020-03-23 |  |  |  |
| 175 | Caso de Uso | 1d | 2020-03-09 | 2020-03-09 | 172 |  | López Rivera Aiko |
| 176 | Desarrollo | 4d | 2020-03-18 | 2020-03-23 | 173 |  | López Sánchez Gustavo Andrés |
| 177 | Pantallas del Modulo | 1d | 2020-03-24 | 2020-03-24 | 176 |  | López Rivera Aiko |
| 178 | Integración de Modulos de Documentación | 3d | 2020-03-24 | 2020-03-26 | 176 |  | López Sánchez Gustavo Andrés |
| 179 | Revisión de CU con Desarrollo. | 2d | 2020-03-27 | 2020-03-30 | 178 |  | López Rivera Aiko; López Sánchez Gustavo Andrés |
| 180 | Corrección casos de uso | 1d | 2020-03-31 | 2020-03-31 | 179 |  | López Rivera Aiko |
| 181 | Reportar Incidencias del desarrollo | 2d | 2020-04-01 | 2020-04-02 | 180 |  | López Rivera Aiko |
| 182 | Solucionar Incidencias del desarrollo | 3d | 2020-03-31 | 2020-04-02 | 179 |  | López Sánchez Gustavo Andrés |
| 183 | Revisión Final Módulo | 1d | 2020-04-03 | 2020-04-03 | 182 |  | López Rivera Aiko; López Sánchez Gustavo Andrés |

Removed: 21 Análisis de Riesgos****************; 53 Casos de Uso

Changed:

| ID | Task | Start | Finish | Duration | Complete | Total float | Predecessors | Other |
| --- | --- | --- | --- | --- | --- | --- | --- | --- |
| 1 | **Proyecto** |  | 2020-03-03 → 2020-04-20 (+48d) | 32d → 66d | 15% → 4% |  |  |  |
| 2 | **Capacitación en Angular** |  | 2020-01-31 → 2020-01-27 (-4d) | 10d → 6d |  |  |  |  |
| 4 | Tipos de dato, funciones | 2020-01-21 → 2020-01-20 (-1d) | 2020-01-21 → 2020-01-20 (-1d) |  |  | 0d → 1d | 3 → none |  |
| 5 | Uso de herencia e implementación | 2020-01-22 → 2020-01-21 (-1d) | 2020-01-22 → 2020-01-21 (-1d) |  |  | 0d → 1d | 4 → 4, 3 |  |
| 6 | Uso de CLI Angular (Comandos para creación dinámica) |  |  |  |  | 0d → 2d |  | was named USo de CLI Angular (Comandos para creación dinámica) |
| 7 | Creación y uso de componentes | 2020-01-24 → 2020-01-23 (-1d) | 2020-01-24 → 2020-01-23 (-1d) |  |  |  | 6 → 5 | constraint start no earlier than 2020-01-24 → start no earlier than 2020-01-23 |
| 8 | Ciclo de vida de los componentes | 2020-01-27 → 2020-01-24 (-3d) | 2020-01-27 → 2020-01-24 (-3d) |  |  | 0d → 1d |  |  |
| 9 | Comunicación entre componentes | 2020-01-28 → 2020-01-24 (-4d) | 2020-01-28 → 2020-01-24 (-4d) |  |  | 0d → 1d | 8 → 7 |  |
| 10 | Servicios Http y Ajax en Angular | 2020-01-29 → 2020-01-24 (-5d) | 2020-01-29 → 2020-01-24 (-5d) |  |  |  | 9 → 7 |  |
| 11 | Pipes y formularios | 2020-01-30 → 2020-01-27 (-3d) | 2020-01-30 → 2020-01-27 (-3d) |  |  |  |  |  |
| 12 | Angular Material UI | 2020-01-31 → 2020-01-27 (-4d) | 2020-01-31 → 2020-01-27 (-4d) |  |  |  | 11 → 10 |  |
| 13 | Aplicación de prueba Angular 8.0 | 2020-01-31 → 2020-01-27 (-4d) | 2020-01-31 → 2020-01-27 (-4d) |  |  |  | 11 → 10 |  |
| 14 | **Capacitación en Latex** |  | 2020-01-31 A → 2020-01-31 |  | 100% → 90% | none → 0d |  |  |
| 20 | Requerimientos No Funcionales |  | 2020-01-30 A → 2020-01-31 (+1d) | 1d → 2d | 100% → 50% | none → 0d |  |  |
| 21 | **Arquitectura y Metodología** | 2020-02-03 → 2020-01-28 (-6d) | 2020-02-04 → 2020-01-29 (-6d) |  |  | 20d → 0d |  |  |
| 22 | Descripción de arquitecturra y metodologia | 2020-02-03 → 2020-01-28 (-6d) | 2020-02-04 → 2020-01-29 (-6d) |  |  | 20d → 0d |  |  |
| 23 | Creacion de Diagrama de arquitectura | 2020-02-03 → 2020-01-28 (-6d) | 2020-02-04 → 2020-01-29 (-6d) |  |  | 20d → 0d |  | was named Creacion de Diagrama de narquitectura |
| 24 | **Modelo de Negocio** | 2020-02-03 → 2020-01-30 (-4d) | 2020-02-05 → 2020-02-03 (-2d) |  |  | 0d → 55d | 2, 14 → 21 |  |
| 25 | Identificación de Objetos de Negocio | 2020-02-03 → 2020-01-30 (-4d) | 2020-02-03 → 2020-01-30 (-4d) |  |  | 2d → 58d |  |  |
| 26 | Creación de primera versión de Modelo de Negocio | 2020-02-03 → 2020-01-30 (-4d) | 2020-02-05 → 2020-02-03 (-2d) |  |  | 0d → 56d |  |  |
| 27 | **Capacitación en Firebase** | 2020-02-06 → 2020-01-30 (-7d) | 2020-02-18 → 2020-02-04 (-14d) | 9d → 4d |  |  | 24 → 21 |  |
| 28 | Base de Datos no SQL | 2020-02-06 → 2020-01-30 (-7d) | 2020-02-06 → 2020-01-30 (-7d) |  |  |  |  |  |
| 29 | Colecciones y Documentos | 2020-02-06 → 2020-01-30 (-7d) | 2020-02-06 → 2020-01-30 (-7d) |  |  |  |  |  |
| 30 | Estructura JSON | 2020-02-07 → 2020-01-31 (-7d) | 2020-02-10 → 2020-02-03 (-7d) |  |  | 0d → 1d |  |  |
| 31 | Cloud Firestore | 2020-02-11 → 2020-01-31 (-11d) | 2020-02-13 → 2020-02-03 (-10d) | 3d → 2d |  |  | 30 → 28, 29 |  |
| 32 | Realtime Database | 2020-02-14 → 2020-02-04 (-10d) | 2020-02-14 → 2020-02-04 (-10d) |  |  |  |  |  |
| 33 | Reglas de seguridad | 2020-02-17 → 2020-02-04 (-13d) | 2020-02-18 → 2020-02-04 (-14d) | 2d → 1d |  |  | 32 → 31 |  |
| 34 | Tipos de autentificación | 2020-02-17 → 2020-02-04 (-13d) | 2020-02-18 → 2020-02-04 (-14d) | 2d → 1d |  |  | 32 → 31 |  |
| 35 | **Integración Firebase y Angular** | 2020-02-19 → 2020-02-05 (-14d) | 2020-03-02 → 2020-02-12 (-19d) | 9d → 6d |  |  |  |  |
| 36 | Prueba de Alta documento con diferentes tipos de datos | 2020-02-19 → 2020-02-05 (-14d) | 2020-02-19 → 2020-02-05 (-14d) |  |  | 0d → 5d |  |  |
| 37 | Lectura de datos individual | 2020-02-20 → 2020-02-05 (-15d) | 2020-02-20 → 2020-02-06 (-14d) | 1d → 2d |  | 0d → 4d | 36 → none |  |
| 38 | Lectura de datos por Colecciones | 2020-02-20 → 2020-02-05 (-15d) | 2020-02-20 → 2020-02-06 (-14d) | 1d → 2d |  | 0d → 4d | 36 → none |  |
| 39 | Lectura con filtros | 2020-02-21 → 2020-02-05 (-16d) | 2020-02-21 → 2020-02-05 (-16d) |  |  | 0d → 5d | 37, 38 → none |  |
| 40 | Funciones Cloud | 2020-02-24 → 2020-02-05 (-19d) | 2020-02-27 → 2020-02-06 (-21d) | 4d → 2d |  |  | 39 → none |  |
| 41 | Altas con por lotes | 2020-02-28 → 2020-02-07 (-21d) | 2020-02-28 → 2020-02-10 (-18d) | 1d → 2d |  |  |  |  |
| 42 | Edición de documentos | 2020-03-02 → 2020-02-11 (-20d) | 2020-03-02 → 2020-02-12 (-19d) | 1d → 2d |  |  | 40, 41 → 41 | constraint none → start no earlier than 2020-02-06 |
| 43 | **Hosting** | 2020-03-03 → 2020-02-13 (-19d) | 2020-03-03 → 2020-02-17 (-15d) | 1d → 3d |  | 0d → 2d | 24, 27, 35 → 35 |  |
| 44 | Hosting Firebase | 2020-03-03 → 2020-02-13 (-19d) | 2020-03-03 → 2020-02-13 (-19d) |  |  | 0d → 2d |  |  |
| 45 | Pruebas de sitio | 2020-03-03 → 2020-02-14 (-18d) | 2020-03-03 → 2020-02-17 (-15d) | 1d → 2d |  | 0d → 2d | none → 44 | constraint none → start no earlier than 2020-02-06 |
| 66 | **Sprint Gestión de etapas** | 2020-02-03 → 2020-02-13 (+10d) | 2020-02-11 → 2020-03-18 (+36d) | 7d → 25d |  | 15d → 0d | 2, 14 → 35 |  |
| 68 | Descripcion de tareas. | 2020-02-03 → 2020-02-13 (+10d) | 2020-02-03 → 2020-02-13 (+10d) |  |  | 15d → 0d |  | resources none → Cervantes Moreno Christian Andres |
| 69 | Requerimientos Funcionales | 2020-02-04 → 2020-02-14 (+10d) | 2020-02-04 → 2020-02-14 (+10d) |  |  | 15d → 0d | 91, 68 → 67, 68 | resources none → Cervantes Moreno Christian Andres |
| 70 | Reglas de Negocio | 2020-02-05 → 2020-02-14 (+9d) | 2020-02-05 → 2020-02-14 (+9d) |  |  | 15d → 0d | 69, 71 → 67, 68 | resources none → Cervantes Moreno Christian Andres |
| 71 | Mensajes | 2020-02-04 → 2020-02-17 (+13d) | 2020-02-04 → 2020-02-17 (+13d) |  |  | 15d → 0d | 91, 68 → 69, 70 | resources none → Cervantes Moreno Christian Andres |
| 72 | **Definir Etapas para el sistema de gestión de admisión escolar** | 2020-02-06 → 2020-02-18 (+12d) | 2020-02-06 → 2020-02-21 (+15d) | 1d → 4d |  | 15d → 0d | none → 71 |  |
| 76 | **Definir fechas de etapas seleccionadas** | 2020-02-07 → 2020-02-19 (+12d) | 2020-02-07 → 2020-02-25 (+18d) | 1d → 5d |  | 15d → 3d | 72 → 73 |  |
| 80 | **Indice de Gestion de Etapas** | 2020-02-10 → 2020-02-18 (+8d) | 2020-02-10 → 2020-02-27 (+17d) | 1d → 8d |  | 15d → 6d | 76 → 71 |  |
| 84 | Pantallas Modulo de Gestión de Etapas | 2020-02-11 → 2020-03-09 (+27d) | 2020-02-11 → 2020-03-09 (+27d) |  |  | 15d → 23d | Casos de Uso → 72, 76, 80, 79 | constraint none → start no earlier than 2020-03-09; resources none → Cervantes Moreno Christian Andres |
| 85 | Revisión de CU con Desarrollo. | 2020-02-03 → 2020-03-10 (+36d) | 2020-02-03 → 2020-03-11 (+37d) | 1d → 2d |  | 21d → 24d | none → 84 | resources none → Cervantes Moreno Christian Andres; López Sánchez Gustavo Andrés |
| 87 | Reportar Incidencias del desarrollo | 2020-02-03 → 2020-03-13 (+39d) | 2020-02-03 → 2020-03-13 (+39d) |  |  | 21d → 24d | none → 86 | was named Reportar y Solucionar Incidencias del Modulo de Gestión de Etapas; resources none → Cervantes Moreno Christian Andres |
| 89 | Revisión Final Módulo | 2020-02-03 → 2020-03-18 (+44d) | 2020-02-03 → 2020-03-18 (+44d) |  |  | 21d → 24d | none → 88 | was named Revisión Final Módulo de Documentación |
| 91 | Diagrama en BPN | 2020-02-03 → 2020-03-27 (+53d) | 2020-02-03 → 2020-03-27 (+53d) |  |  | 15d → 1d |  | resources none → López Rivera Aiko |

## Version 4 (saved 2020-06-07)

Note of the change: calendario final

Last finish stays 2020-04-20.

Added:

| ID | Task | Duration | Start | Finish | Predecessors | Resources |
| --- | --- | --- | --- | --- | --- | --- |
| 161 | Dagrama de Secuencía | 1d | 2020-02-28 | 2020-02-28 | 160, 83 | Flores Altamirano Edgar |
| 165 | Diagrama de Secuencía | 1d | 2020-03-03 | 2020-03-03 | 164 | Flores Altamirano Edgar |
| 169 | Diagrama de Secuencía | 1d | 2020-03-04 | 2020-03-04 | 168 | Flores Altamirano Edgar |
| 173 | Diagrama de Secuencía | 1d | 2020-03-05 | 2020-03-05 | 172 | Flores Altamirano Edgar |
| 177 | Diagrama de Secuencía | 1d | 2020-03-09 | 2020-03-09 | 176 | Flores Altamirano Edgar |
| 181 | Diagrama de Secuencía | 1d | 2020-03-10 | 2020-03-10 | 180 | Flores Altamirano Edgar |
| 190 | **Capacitación Software de Pruebas de Rendimiento** | 5d | 2020-03-13 | 2020-03-19 | 151 | Flores Altamirano Edgar |
| 191 | Teoria pruebas de rendimiento | 1d | 2020-03-13 | 2020-03-13 |  | Flores Altamirano Edgar |
| 192 | Clasifición de pruebas | 1d | 2020-03-13 | 2020-03-13 |  | Flores Altamirano Edgar |
| 193 | Componentes para plan de pruebas | 1d | 2020-03-16 | 2020-03-16 | 192 | Flores Altamirano Edgar |
| 194 | Reportes | 1d | 2020-03-17 | 2020-03-17 | 193 | Flores Altamirano Edgar |
| 195 | Pruebas con blazedemo | 2d | 2020-03-18 | 2020-03-19 | 194 | Flores Altamirano Edgar |
| 196 | **Pruebas de Rendimiento Gestión de Etapas** | 6d | 2020-03-20 | 2020-03-27 | 195, 66 | Flores Altamirano Edgar |
| 197 | Programación de pruebas por cada CU | 4d | 2020-03-20 | 2020-03-25 |  | Flores Altamirano Edgar |
| 198 | Reporte de incidencias de Pruebas | 1d | 2020-03-26 | 2020-03-26 | 197 | Flores Altamirano Edgar |
| 199 | Resultados | 1d | 2020-03-27 | 2020-03-27 | 198 | Flores Altamirano Edgar |
| 200 | **Pruebas de Rendimiento Gestión de Usuarios** | 6d | 2020-03-30 | 2020-04-06 | 196, 114 | Flores Altamirano Edgar |
| 201 | Programación de pruebas por cada CU | 4d | 2020-03-30 | 2020-04-02 |  | Flores Altamirano Edgar |
| 202 | Reporte de incidencias de Pruebas | 1d | 2020-04-03 | 2020-04-03 | 201 | Flores Altamirano Edgar |
| 203 | Resultados | 1d | 2020-04-06 | 2020-04-06 | 202 | Flores Altamirano Edgar |
| 204 | **Pruebas de Rendimiento Documentación** | 6d | 2020-04-07 | 2020-04-14 | 200, 153 | Flores Altamirano Edgar |
| 205 | Programación de pruebas por cada CU | 4d | 2020-04-07 | 2020-04-10 |  | Flores Altamirano Edgar |
| 206 | Reporte de incidencias de Pruebas | 1d | 2020-04-13 | 2020-04-13 | 205 | Flores Altamirano Edgar |
| 207 | Resultados | 1d | 2020-04-14 | 2020-04-14 | 206 | Flores Altamirano Edgar |

Changed:

| ID | Task | Start | Finish | Duration | Total float | Predecessors | Other |
| --- | --- | --- | --- | --- | --- | --- | --- |
| 82 | Diagrama de Secuencia | 2020-02-19 → 2020-02-21 (+2d) | 2020-02-19 → 2020-02-21 (+2d) |  | 35d → 15d | 81 → 81, 78 |  |
| 113 | Revisión Final Módulo |  |  |  |  |  | resources none → López Rivera Aiko; López Sánchez Gustavo Andrés |
| 125 | Diagrama de Secuencia | 2020-02-25 → 2020-02-24 (-1d) | 2020-02-25 → 2020-02-24 (-1d) |  | 39d → 28d | 120 → 81, 118 |  |
| 166 | Desarrollo | 2020-03-02 → 2020-03-03 (+1d) |  | 5d → 4d |  | 162 → 162, 164 | constraint none → start no earlier than 2020-03-03 |

## Version 5 (saved 2020-06-07)

Note of the change: update(Cronograma final)

Last finish 2020-04-20 → 2020-04-16 (-4d).

Changed:

| ID | Task | Start | Finish | Duration | Total float | Predecessors |
| --- | --- | --- | --- | --- | --- | --- |
| 1 | **Proyecto** |  | 2020-04-20 → 2020-04-16 (-4d) | 66d → 64d |  |  |
| 46 | **Capacitación Automotización** | 2020-01-28 → 2020-02-03 (+6d) | 2020-02-10 → 2020-02-14 (+4d) |  | 50d → 44d | 2 → 20 |
| 47 | Localizando elementos (id, name, xpath, link text, tag name, class name, css selector). | 2020-01-28 → 2020-02-03 (+6d) | 2020-01-28 → 2020-02-03 (+6d) |  | 59d → 53d |  |
| 48 | Asserts | 2020-01-28 → 2020-02-03 (+6d) | 2020-01-28 → 2020-02-03 (+6d) |  | 50d → 44d |  |
| 49 | Unit test | 2020-01-29 → 2020-02-04 (+6d) | 2020-01-29 → 2020-02-04 (+6d) |  | 58d → 52d |  |
| 50 | Page Objects | 2020-01-29 → 2020-02-04 (+6d) | 2020-01-29 → 2020-02-04 (+6d) |  | 50d → 44d |  |
| 51 | Implicit Wait | 2020-01-30 → 2020-02-05 (+6d) | 2020-01-30 → 2020-02-05 (+6d) |  | 50d → 44d |  |
| 52 | Explicit Wait | 2020-01-31 → 2020-02-06 (+6d) | 2020-01-31 → 2020-02-06 (+6d) |  | 50d → 44d |  |
| 53 | Click en un toggle o Switch | 2020-02-03 → 2020-02-07 (+4d) | 2020-02-03 → 2020-02-07 (+4d) |  | 50d → 44d |  |
| 54 | Select con For | 2020-02-04 → 2020-02-10 (+6d) | 2020-02-04 → 2020-02-10 (+6d) |  | 50d → 44d |  |
| 55 | Subir Archivos | 2020-02-05 → 2020-02-11 (+6d) | 2020-02-05 → 2020-02-11 (+6d) |  | 50d → 44d |  |
| 56 | Reportes en HTML | 2020-02-06 → 2020-02-12 (+6d) | 2020-02-06 → 2020-02-12 (+6d) |  | 50d → 44d |  |
| 57 | Omitiendo Casos | 2020-02-07 → 2020-02-13 (+6d) | 2020-02-07 → 2020-02-13 (+6d) |  | 50d → 44d |  |
| 58 | Configuraciones de Bowrser | 2020-02-10 → 2020-02-14 (+4d) | 2020-02-10 → 2020-02-14 (+4d) |  | 50d → 44d |  |
| 72 | **Definir Etapas para el sistema de gestión de admisión escolar** |  | 2020-02-21 → 2020-02-20 (-1d) | 4d → 3d | 1d → 9d |  |
| 75 | Desarrollo | 2020-02-20 → 2020-02-19 (-1d) | 2020-02-21 → 2020-02-20 (-1d) |  | 1d → 9d | 74, 43 → 43, 73 |
| 76 | **Definir fechas de etapas seleccionadas** |  | 2020-02-25 → 2020-02-24 (-1d) | 5d → 4d | 4d → 11d |  |
| 79 | Desarrollo | 2020-02-24 → 2020-02-21 (-3d) | 2020-02-25 → 2020-02-24 (-1d) |  | 1d → 9d |  |
| 83 | Desarrollo | 2020-02-26 → 2020-02-25 (-1d) |  | 2d → 3d | 1d → 9d |  |
| 90 | **Sprint Gestión de landingpage** | 2020-03-27 → 2020-03-10 (-17d) | 2020-04-20 → 2020-04-10 (-10d) | 17d → 24d |  | 184 → 180 |
| 91 | Diagrama en BPN | 2020-03-27 → 2020-03-10 (-17d) | 2020-03-27 → 2020-03-10 (-17d) |  | 1d → 0d |  |
| 92 | Descripcion de tareas. | 2020-03-27 → 2020-03-10 (-17d) | 2020-03-27 → 2020-03-10 (-17d) |  | 1d → 0d |  |
| 93 | Requerimientos Funcionales | 2020-03-30 → 2020-03-11 (-19d) | 2020-03-30 → 2020-03-11 (-19d) |  | 1d → 0d |  |
| 94 | Reglas de Negocio | 2020-03-30 → 2020-03-11 (-19d) | 2020-03-30 → 2020-03-11 (-19d) |  | 1d → 0d |  |
| 95 | Mensajes | 2020-03-31 → 2020-03-12 (-19d) | 2020-03-31 → 2020-03-12 (-19d) |  | 1d → 0d |  |
| 96 | **Registro de aspirante Google o Correo y Contraseña** | 2020-04-01 → 2020-03-13 (-19d) | 2020-04-07 → 2020-04-10 (+3d) | 5d → 21d |  | 95 → none |
| 97 | Caso de Uso | 2020-04-01 → 2020-03-13 (-19d) | 2020-04-01 → 2020-03-13 (-19d) |  | 1d → 0d | none → 95 |
| 98 | Diagrama de Secuencia | 2020-04-02 → 2020-03-16 (-17d) | 2020-04-02 → 2020-03-16 (-17d) |  | 1d → 21d |  |
| 99 | Desarrollo | 2020-04-06 → 2020-04-09 (+3d) | 2020-04-07 → 2020-04-10 (+3d) |  | 0d → 4d |  |
| 100 | **Inicio de Sesión Administrador(s) o Aspirantes** | 2020-04-08 → 2020-03-16 (-23d) | 2020-04-09 → 2020-03-17 (-23d) |  |  | 96 → 97 |
| 101 | Caso de Uso | 2020-04-08 → 2020-03-16 (-23d) | 2020-04-08 → 2020-03-16 (-23d) |  |  |  |
| 102 | Diagrama de Secuencia | 2020-04-08 → 2020-03-16 (-23d) | 2020-04-08 → 2020-03-16 (-23d) |  |  |  |
| 103 | Desarrollo | 2020-04-08 → 2020-03-16 (-23d) | 2020-04-09 → 2020-03-17 (-23d) |  |  |  |
| 104 | **LandingPage (Calendario)** | 2020-04-10 → 2020-03-18 (-23d) | 2020-04-13 → 2020-03-20 (-24d) | 2d → 3d | 5d → 0d |  |
| 105 | Caso de Uso | 2020-04-10 → 2020-03-18 (-23d) | 2020-04-10 → 2020-03-18 (-23d) |  | 6d → 21d |  |
| 106 | Diagrama de Secuencia | 2020-04-10 → 2020-03-18 (-23d) | 2020-04-10 → 2020-03-18 (-23d) |  | 6d → 21d |  |
| 107 | Desarrollo | 2020-04-10 → 2020-03-18 (-23d) | 2020-04-13 → 2020-03-20 (-24d) | 2d → 3d | 5d → 0d |  |
| 108 | Pantallas del Modulo | 2020-04-10 → 2020-03-23 (-18d) | 2020-04-10 → 2020-03-23 (-18d) |  |  | 95, 96, 100 → 107 |
| 109 | Revisión de CU con Desarrollo. | 2020-04-13 → 2020-03-24 (-20d) | 2020-04-13 → 2020-03-24 (-20d) |  |  |  |
| 110 | Corrección casos de uso | 2020-04-14 → 2020-03-25 (-20d) | 2020-04-14 → 2020-03-25 (-20d) |  |  |  |
| 111 | Reportar Incidencias del desarrollo | 2020-04-15 → 2020-03-26 (-20d) | 2020-04-15 → 2020-03-26 (-20d) |  | 0d → 15d |  |
| 112 | Solucionar Incidencias del desarrollo | 2020-04-16 → 2020-03-26 (-21d) | 2020-04-17 → 2020-03-27 (-21d) |  |  | 111 → 110 |
| 113 | Revisión Final Módulo | 2020-04-20 → 2020-03-30 (-21d) | 2020-04-20 → 2020-03-30 (-21d) |  |  |  |
| 153 | **Sprint de Gestión de Documentación** |  | 2020-04-03 → 2020-04-08 (+5d) | 34d → 37d |  |  |
| 159 | **Indice de Gestión de Documentación** |  | 2020-02-28 → 2020-03-02 (+3d) | 2d → 3d |  |  |
| 162 | Desarrollo |  | 2020-02-28 → 2020-03-02 (+3d) | 1d → 2d | 1d → 9d |  |
| 183 | Pantallas del Modulo | 2020-03-24 → 2020-03-31 (+7d) | 2020-03-24 → 2020-03-31 (+7d) |  | 13d → 0d | 182 → 113 |
| 185 | Revisión de CU con Desarrollo. | 2020-03-27 → 2020-04-01 (+5d) | 2020-03-30 → 2020-04-02 (+3d) |  |  | 184 → 183 |
| 186 | Corrección casos de uso | 2020-03-31 → 2020-04-03 (+3d) | 2020-03-31 → 2020-04-03 (+3d) |  | 6d → 1d |  |
| 187 | Reportar Incidencias del desarrollo | 2020-04-01 → 2020-04-06 (+5d) | 2020-04-02 → 2020-04-07 (+5d) |  | 6d → 1d |  |
| 188 | Solucionar Incidencias del desarrollo | 2020-03-31 → 2020-04-03 (+3d) | 2020-04-02 → 2020-04-07 (+5d) |  |  |  |
| 189 | Revisión Final Módulo | 2020-04-03 → 2020-04-08 (+5d) | 2020-04-03 → 2020-04-08 (+5d) |  |  |  |
| 204 | **Pruebas de Rendimiento Documentación** | 2020-04-07 → 2020-04-09 (+2d) | 2020-04-14 → 2020-04-16 (+2d) |  | 4d → 0d |  |
| 205 | Programación de pruebas por cada CU | 2020-04-07 → 2020-04-09 (+2d) | 2020-04-10 → 2020-04-14 (+4d) |  | 4d → 0d |  |
| 206 | Reporte de incidencias de Pruebas | 2020-04-13 → 2020-04-15 (+2d) | 2020-04-13 → 2020-04-15 (+2d) |  | 4d → 0d |  |
| 207 | Resultados | 2020-04-14 → 2020-04-16 (+2d) | 2020-04-14 → 2020-04-16 (+2d) |  | 4d → 0d |  |

## Version 6 (saved 2020-06-10)

Note of the change: actualizacion Modelo de negocio

Last finish stays 2020-04-16.

Changed:

| ID | Task | Other |
| --- | --- | --- |
| 80 | **Visualizar opciones de gestión de etapas** | was named Indice de Gestion de Etapas |
| 96 | **Registrar aspirante con Google o Correo y Contraseña** | was named Registro de aspirante Google o Correo y Contraseña |
| 100 | **Iniciar Sesión Administrador(s) o Aspirantes** | was named Inicio de Sesión Administrador(s) o Aspirantes |
| 104 | **Consultar fechas de Proceso de admisión** | was named LandingPage (Calendario) |
| 119 | **Visualizar opciones de Gestión de Usuarios** | was named Indice de Gestión de Usuarios |
| 159 | **Visualizar opciones de Gestión de Documentación** | was named Indice de Gestión de Documentación |
